# D10126532InitialPlan

Schedule from MS Project, 2013-07-01 to 2014-01-09, costs in €.
Microsoft

## Calendars

- Standard: Mon-Fri 08:00-12:00, 13:00-17:00; Sat-Sun off. Exceptions (off unless hours are given): 2013-08-05 (August Bank Holiday), 2013-10-28 (October Bank Holiday), 2013-12-24 (Christmas Eve), 2013-12-25 (Christmas Day), 2013-12-26 (St. Stephen's Day), 2014-01-01 (New Year's Day).

## Resources

| Resource | Unit | Rate |
| --- | --- | --- |
| John Warde |  | 38 |
| Gary Dolan |  | 45 |
| Michael McMorrow |  | 35 |
| Fergal Browne |  | 35 |
| Carmel Keegan |  | 32 |
| Elaine McLaughlin |  | 28 |
| Nadia Moloney |  | 38 |
| CSP Test Account | fixed rate hours | 0.05 |
| CSP Production Account | fixed rate hours | 0.5 |

## Schedule

| ID | WBS | Task | Type | Duration | Start | Finish | Predecessors | Total slack | Free slack | Resources | Work | Cost |
| --- | --- | --- | --- | --- | --- | --- | --- | --- | --- | --- | --- | --- |
| 1 | 1 | **Project Planning** |  | 44d | 2013-07-01 | 2013-08-30 |  | 89d |  |  | 34.5h | 1,339 |
| 2 | 1.1 | Project Charter Document |  | 2d | 2013-07-01 | 2013-07-02 |  | 128d | 0d | John Warde [50%] | 10.5h | 399 |
| 3 | 1.2 | Project Management Plan |  | 3d | 2013-07-03 | 2013-07-05 | 2 | 128d | 0d | John Warde [33.3%] | 16h | 608 |
| 4 | 1.3 | Project Initation Comlete | milestone | 0d | 2013-07-05 | 2013-07-05 | 3 | 128d |  |  |  |  |
| 5 | 1.4 | Project Review, Lessons Learned |  | 1d | 2013-08-30 | 2013-08-30 | 65 | 89d |  | John Warde [50%]; Gary Dolan [50%] | 8h | 332 |
| 6 | 2 | **Technical Product Design** |  | 8d | 2013-07-01 | 2013-07-10 |  | 0d |  |  | 214h | 8,020 |
| 7 | 2.1 | Requirements Gathering |  | 3d | 2013-07-01 | 2013-07-03 |  | 0d |  | Gary Dolan; John Warde [33.3%] | 32h | 1,384 |
| 8 | 2.2 | Software Architecture Design |  | 5d | 2013-07-04 | 2013-07-10 | 7 | 0d |  | Gary Dolan; Michael McMorrow | 80h | 3,200 |
| 9 | 2.3 | Cloud Infrastructure Design |  | 5d | 2013-07-04 | 2013-07-10 | 7 | 125d |  | Fergal Browne | 40h | 1,400 |
| 10 | 2.4 | Test Plan Design |  | 4d | 2013-07-04 | 2013-07-09 | 7 | 126d |  | Elaine McLaughlin | 32h | 896 |
| 11 | 2.5 | User Interface Design |  | 3d | 2013-07-04 | 2013-07-08 | 7 | 127d |  | Nadia Moloney; John Warde [17%] | 30h | 1,140 |
| 12 | 2.6 | Technical Design Documents Complete | milestone | 0d | 2013-07-10 | 2013-07-10 | 8 | 125d |  |  |  |  |
| 13 | 3 | **Technical Implementation** |  | 35.5d | 2013-07-11 | 2013-08-30 |  | 0d |  |  | 806.9h | 29,807.58 |
| 14 | 3.1 | **Sprint 1** |  | 6d | 2013-07-11 | 2013-07-18 |  | 0d |  |  | 145.6h | 5,398 |
| 15 | 3.1.1 | Sprint Plan |  | 0.5d | 2013-07-11 | 2013-07-11 | 8 | 0d |  | John Warde; Gary Dolan | 8h | 332 |
| 16 | 3.1.2 | Implement Architecture Framework |  | 5d | 2013-07-11 | 2013-07-18 | 15 | 0d |  | Gary Dolan | 40h | 1,800 |
| 17 | 3.1.3 | Code Database Schema & Initial data |  | 2d | 2013-07-11 | 2013-07-15 | 15 | 119.5d | 0d | Michael McMorrow | 16h | 560 |
| 18 | 3.1.4 | Integrate OAuth for Authentication |  | 2d | 2013-07-15 | 2013-07-17 | 17 | 119.5d | 0d | Michael McMorrow; CSP Test Account [16 fixed rate hours] | 16h | 560.8 |
| 19 | 3.1.5 | Login page & dummy landing page with basic user info |  | 1d | 2013-07-17 | 2013-07-18 | 18 | 119.5d |  | Michael McMorrow; CSP Test Account [8 fixed rate hours] | 8h | 280.4 |
| 20 | 3.1.6 | Develop automated tests for sprint |  | 2d | 2013-07-11 | 2013-07-15 | 15 | 122.5d |  | Elaine McLaughlin | 24h | 672 |
| 21 | 3.1.7 | Develop Deployment Script for test Environment |  | 2d | 2013-07-11 | 2013-07-15 | 15 | 122.5d |  | Fergal Browne; CSP Test Account [16 fixed rate hours] | 20h | 700.8 |
| 22 | 3.1.8 | Release Sprint | milestone | 0d | 2013-07-18 | 2013-07-18 | 16 | 0d |  |  |  |  |
| 23 | 3.1.9 | Sprint Review & Improve Process |  | 0.5d | 2013-07-18 | 2013-07-18 | 22 | 0d |  | Gary Dolan [60%]; Michael McMorrow [60%]; Fergal Browne [60%]; Carmel Keegan [60%]; Elaine McLaughlin [60%] | 13.6h | 492 |
| 24 | 3.2 | **Sprint 2** |  | 6d | 2013-07-19 | 2013-07-26 |  | 0d |  |  | 169.6h | 6,125.6 |
| 25 | 3.2.1 | Sprint Plan |  | 0.5d | 2013-07-19 | 2013-07-19 | 23 | 0d |  | John Warde; Gary Dolan | 8h | 332 |
| 26 | 3.2.2 | Implement Thesaurus Service Plugin |  | 3d | 2013-07-19 | 2013-07-24 | 25 | 0d |  | Gary Dolan; CSP Test Account [12 fixed rate hours] | 24h | 1,080.6 |
| 27 | 3.2.3 | Code Main HTML5/jQuery page |  | 2d | 2013-07-19 | 2013-07-23 | 25 | 2d |  | Michael McMorrow; CSP Test Account [8 fixed rate hours] | 16h | 560.4 |
| 28 | 3.2.4 | Integrate Thesaurus Data with HTML/jQuery |  | 1d | 2013-07-24 | 2013-07-25 | 26 | 0d |  | Gary Dolan; CSP Test Account [6 fixed rate hours] | 8h | 360.3 |
| 29 | 3.2.5 | iOS App: Login Page + Thesaurus Integration |  | 4d | 2013-07-19 | 2013-07-25 | 25 | 114.5d |  | Carmel Keegan | 32h | 1,024 |
| 30 | 3.2.6 | Bug Fixes from previous sprint |  | 1d | 2013-07-25 | 2013-07-26 | 27, 28 | 0d |  | Gary Dolan; Michael McMorrow; CSP Test Account [6 fixed rate hours] | 16h | 640.3 |
| 31 | 3.2.7 | Develop deployment script for production |  | 3d | 2013-07-19 | 2013-07-24 | 25 | 115.5d |  | Fergal Browne; CSP Production Account [24 fixed rate hours] | 24h | 852 |
| 32 | 3.2.8 | Develop automated test for sprint |  | 3d | 2013-07-19 | 2013-07-24 | 25 | 115.5d |  | Elaine McLaughlin | 28h | 784 |
| 33 | 3.2.9 | Release Sprint | milestone | 0d | 2013-07-26 | 2013-07-26 | 30 | 0d |  |  |  |  |
| 34 | 3.2.10 | Sprint Review & Improve Process |  | 0.5d | 2013-07-26 | 2013-07-26 | 33 | 0d |  | Gary Dolan [60%]; Michael McMorrow [60%]; Fergal Browne [60%]; Carmel Keegan [60%]; Elaine McLaughlin [60%] | 13.6h | 492 |

| ID | WBS | Task | Type | Duration | Start | Finish | Predecessors | Total slack | Resources | Work | Cost |
| --- | --- | --- | --- | --- | --- | --- | --- | --- | --- | --- | --- |
| 35 | 3.3 | **Sprint 3** |  | 7d | 2013-07-29 | 2013-08-07 |  | 0d |  | 120h | 4,380.68 |
| 36 | 3.3.1 | Sprint Plan |  | 0.5d | 2013-07-29 | 2013-07-29 | 34 | 0d | John Warde; Gary Dolan | 8h | 332 |
| 37 | 3.3.2 | Integrate SEO Ad Campaign Framework |  | 1d | 2013-07-29 | 2013-07-30 | 36 | 111.5d | Michael McMorrow; CSP Production Account [4 fixed rate hours]; CSP Test Account [4 fixed rate hours] | 8h | 282.2 |
| 38 | 3.3.3 | Code Domain Name Availabity Module |  | 4d | 2013-07-29 | 2013-08-02 | 36 | 0d | Gary Dolan; CSP Test Account [16 fixed rate hours]; CSP Production Account [0.16 fixed rate hours] | 32h | 1,440.88 |
| 39 | 3.3.4 | iOS App: Integration with SEO, Domain Name availability |  | 3d | 2013-07-30 | 2013-08-02 | 38SS+1d | 108.5d | Carmel Keegan | 28h | 896 |
| 40 | 3.3.5 | Bug Fixes from previous sprint |  | 2d | 2013-08-02 | 2013-08-07 | 38 | 0d | Michael McMorrow; CSP Test Account [8 fixed rate hours] | 16h | 560.4 |
| 41 | 3.3.6 | Develop automated test for sprint |  | 2d | 2013-07-29 | 2013-07-31 | 36 | 110.5d | Elaine McLaughlin; CSP Test Account [24 fixed rate hours] | 16h | 449.2 |
| 42 | 3.3.7 | Release Sprint | milestone | 0d | 2013-08-07 | 2013-08-07 | 40 | 0d |  |  |  |
| 43 | 3.3.8 | Sprint Review & Improve Process |  | 0.5d | 2013-08-07 | 2013-08-07 | 42 | 0d | Gary Dolan [60%]; Michael McMorrow [60%]; Fergal Browne [60%]; Carmel Keegan [60%]; Elaine McLaughlin [60%] | 12h | 420 |
| 44 | 3.4 | **Sprint 4** |  | 6d | 2013-08-08 | 2013-08-15 |  | 0d |  | 116h | 4,196.8 |
| 45 | 3.4.1 | Sprint Plan |  | 0.5d | 2013-08-08 | 2013-08-08 | 43 | 0d | John Warde; Gary Dolan | 8h | 332 |
| 46 | 3.4.2 | Code Social Real Estate Availability Module |  | 3d | 2013-08-08 | 2013-08-13 | 45 | 0d | Gary Dolan; Michael McMorrow; CSP Test Account [72 fixed rate hours] | 48h | 1,923.6 |
| 47 | 3.4.3 | iOS App: Social Real Estate Integration |  | 2d | 2013-08-09 | 2013-08-12 | 45SS+1d | 103d | Carmel Keegan | 16h | 512 |
| 48 | 3.4.4 | Develop automated test for sprint |  | 2d | 2013-08-08 | 2013-08-12 | 45 | 103.5d | Elaine McLaughlin; CSP Test Account [16 fixed rate hours] | 16h | 448.8 |
| 49 | 3.4.5 | Bug Fixes from previous sprint |  | 2d | 2013-08-13 | 2013-08-15 | 46 | 0d | Michael McMorrow; CSP Test Account [8 fixed rate hours] | 16h | 560.4 |
| 50 | 3.4.6 | Release Sprint | milestone | 0d | 2013-08-15 | 2013-08-15 | 49 | 0d |  |  |  |
| 51 | 3.4.7 | Sprint Review & Improve Process |  | 0.5d | 2013-08-15 | 2013-08-15 | 50 | 0d | Gary Dolan [60%]; Michael McMorrow [60%]; Fergal Browne [60%]; Carmel Keegan [60%]; Elaine McLaughlin [60%] | 12h | 420 |
| 52 | 3.5 | **Sprint 5** |  | 5d | 2013-08-16 | 2013-08-22 |  | 0d |  | 135.1h | 4,999.5 |
| 53 | 3.5.1 | Sprint Plan |  | 0.5d | 2013-08-16 | 2013-08-16 | 51 | 0d | John Warde; Gary Dolan | 6h | 242 |
| 54 | 3.5.2 | Bug Fixes from previous sprint |  | 2d | 2013-08-16 | 2013-08-20 | 53 | 97.5d | Gary Dolan; Michael McMorrow; CSP Test Account [12 fixed rate hours] | 18h | 715.6 |
| 55 | 3.5.3 | Test scale-out (stress test) |  | 2d | 2013-08-16 | 2013-08-20 | 53 | 0d | Fergal Browne; Elaine McLaughlin; Gary Dolan; Michael McMorrow; CSP Production Account [96 fixed rate hours] | 50.5h | 1,798.5 |
| 56 | 3.5.4 | Bug Fixing from scale-out testing |  | 2d | 2013-08-20 | 2013-08-22 | 55 | 0d | Gary Dolan; Michael McMorrow; CSP Test Account [8 fixed rate hours]; CSP Production Account [8 fixed rate hours] | 32h | 1,284.4 |
| 57 | 3.5.5 | iOS App: Final Integration and bug fixing |  | 2d | 2013-08-16 | 2013-08-20 | 53 | 97.5d | Carmel Keegan | 16h | 512 |
| 58 | 3.5.6 | Release Sprint | milestone | 0d | 2013-08-22 | 2013-08-22 | 56 | 0d |  |  |  |
| 59 | 3.5.7 | Sprint Review & Improve Process |  | 0.5d | 2013-08-22 | 2013-08-22 | 58 | 0d | Gary Dolan [60%]; Michael McMorrow [60%]; Fergal Browne [60%]; Carmel Keegan [60%]; Elaine McLaughlin [60%] | 12.6h | 447 |
| 60 | 3.6 | Release to Market (Go Live) | milestone | 0d | 2013-08-22 | 2013-08-22 | 59 | 0d |  |  |  |

Notes:
- 55: Scale out testing will test the web application to double it expected maxium capacity, hence the 4 x 24 hours unit cost rate for 2 days testing

| ID | WBS | Task | Type | Duration | Start | Finish | Predecessors | Total slack | Resources | Work | Cost |
| --- | --- | --- | --- | --- | --- | --- | --- | --- | --- | --- | --- |
| 61 | 3.7 | **Sprint 6** |  | 5d | 2013-08-23 | 2013-08-29 |  | 0d |  | 120.6h | 4,503 |
| 62 | 3.7.1 | Sprint Plan |  | 0.5d | 2013-08-23 | 2013-08-23 | 60 | 0d | John Warde; Gary Dolan | 8h | 332 |
| 63 | 3.7.2 | Post Live Bug Fixing |  | 4d | 2013-08-23 | 2013-08-29 | 62 | 0d | Gary Dolan; Michael McMorrow; Carmel Keegan | 100h | 3,724 |
| 64 | 3.7.3 | Release Sprint | milestone | 0d | 2013-08-29 | 2013-08-29 | 63 | 0d |  |  |  |
| 65 | 3.7.4 | Sprint Review & Improve Process |  | 0.5d | 2013-08-29 | 2013-08-29 | 64 | 0d | Gary Dolan [60%]; Michael McMorrow [60%]; Fergal Browne [60%]; Carmel Keegan [60%]; Elaine McLaughlin [60%] | 12.6h | 447 |
| 66 | 3.8 | CSP Production Account for Beta Customer |  | 17d | 2013-08-07 | 2013-08-30 | 42 | 89.5d | CSP Production Account [408 fixed rate hours] |  | 204 |
| 67 | 4 | **On going Support & Maintenance** |  | 90d | 2013-08-30 | 2014-01-09 |  | 0d |  | 360h | 13,356 |
| 68 | 4.1 | Website monitoring |  | 90d | 2013-08-30 | 2014-01-09 | 65 | 0d | Michael McMorrow [25%] | 180h | 6,300 |
| 69 | 4.2 | Cloud Hosting Costs |  | 90d | 2013-08-30 | 2014-01-09 | 65 | 0d | CSP Production Account [2160 fixed rate hours] |  | 1,080 |
| 70 | 4.3 | Bug fixing |  | 90d | 2013-08-30 | 2014-01-09 | 65 | 0d | Michael McMorrow [10%] | 72h | 2,520 |
| 71 | 4.4 | iOS Bug Fixing & Releases |  | 90d | 2013-08-30 | 2014-01-09 | 65 | 0d | Carmel Keegan [15%] | 108h | 3,456 |
| 72 | 5 | Project Close | milestone | 0d | 2014-01-09 | 2014-01-09 | 70 | 0d |  |  |  |

Notes:
- 68: Michael only to spend an average of 2 hours per day making sure that website is performing as intended
- 70: It is estimated that Michael will only spend on average 10% of his time fixing bugs on the web application
- 71: It is estimated that Carmel will only spend on average 15% of her time fixing bugs on the iOS application
